# Gantt

How a schedule from MS Project changed from version to version. A marks actual dates.

## Version 1 (saved 2018-02-28)

Note of the change: mise a jour du gantt

| ID | WBS | Task | Duration | Start | Finish | Predecessors | Total float | Constraint |
| --- | --- | --- | --- | --- | --- | --- | --- | --- |
| 1 | 1 | **Partie graphique** | 11d | 2018-02-28 | 2018-03-14 |  | 27d |  |
| 2 |  | Fenêtre d'accueil | 1d | 2018-02-28 | 2018-02-28 |  | 37d |  |
| 3 |  | Ajout d'un bien | 1d | 2018-02-28 | 2018-02-28 |  | 37d | start no earlier than 2018-02-28 |
| 4 |  | Ajout d'un commercial | 1d | 2018-02-28 | 2018-02-28 |  | 37d |  |
| 5 |  | Impression d'une fiche de bien | 1d | 2018-03-01 | 2018-03-01 |  | 36d | start no earlier than 2018-03-01 |
| 6 |  | Impression fiche de souhait | 1d | 2018-03-01 | 2018-03-01 |  | 36d | start no earlier than 2018-03-01 |
| 7 |  | Création visite | 1d | 2018-03-02 | 2018-03-02 |  | 35d | start no earlier than 2018-03-02 |
| 8 |  | Création proposition de visite | 2d | 2018-03-05 | 2018-03-06 |  | 33d | finish no earlier than 2018-03-06 |
| 9 |  | Liste des visites | 2d | 2018-03-02 | 2018-03-05 |  | 34d | finish no earlier than 2018-03-05 |
| 10 |  | Liste des commerciaux | 1d | 2018-03-01 | 2018-03-01 |  | 36d | start no earlier than 2018-03-01 |
| 11 |  | Fiche de souhait | 2d | 2018-03-07 | 2018-03-08 |  | 31d | start no earlier than 2018-03-07 |
| 12 |  | Catalogue des biens | 3d | 2018-03-06 | 2018-03-08 |  | 31d | start no earlier than 2018-03-06 |
| 13 |  | Ajouter un client | 2d | 2018-03-02 | 2018-03-05 |  | 34d | finish no earlier than 2018-03-05 |
| 14 |  | Recherche d'un client | 3d | 2018-03-06 | 2018-03-08 |  | 31d | start no earlier than 2018-03-06 |
| 15 |  | Lien entre les fenêtres (evenementiel) | 4d | 2018-03-09 | 2018-03-14 |  | 25d | start no earlier than 2018-03-09 |
| 16 | 2 | **Création de la base de données** | 11d | 2018-02-28 | 2018-03-14 |  | 25d |  |
| 17 |  | Créer la base | 1d | 2018-02-28 | 2018-02-28 |  | 25d |  |
| 18 |  | Tester import sous C# | 1d | 2018-03-01 | 2018-03-01 | 17 | 25d | start no earlier than 2018-03-01 |
| 19 |  | Créer le jeu de données | 5d | 2018-03-02 | 2018-03-08 | 18 | 25d | start no earlier than 2018-03-02 |
| 20 |  | Créer procédures stockées (facultatif) | 5d | 2018-03-02 | 2018-03-08 | 18 | 25d |  |
| 21 |  | Ecrire et tester les requêtes sous SQL Server | 4d | 2018-03-09 | 2018-03-14 | 19, 20 | 25d |  |
| 22 | 3 | **Intégration des requêtes aux fenêtres (Linq)** | 33d | 2018-03-15 | 2018-04-30 | 21, 15 |  |  |
| 23 |  | Ajout / modification d'un bien | 2d | 2018-03-15 | 2018-03-16 | 21 | 26d |  |
| 24 |  | Ajout / modification d'un client | 2d | 2018-03-15 | 2018-03-16 | 21 | 26d |  |
| 25 |  | Ajout / modification d'un commercial | 2d | 2018-03-15 | 2018-03-16 | 21 | 26d |  |
| 26 |  | Fiche de souhaits | 2d | 2018-03-15 | 2018-03-16 | 21 | 26d |  |
| 27 |  | Création d'une visite | 2d | 2018-03-19 | 2018-03-20 |  | 24d | start no earlier than 2018-03-19 |
| 28 |  | Création proposition de visite | 2d | 2018-03-19 | 2018-03-20 | 21 | 24d | start no earlier than 2018-03-19 |
| 29 |  | Vue commerciaux | 3d | 2018-03-19 | 2018-03-21 | 21 | 23d | start no earlier than 2018-03-19 |
| 30 |  | Catalogue des biens | 2d | 2018-03-19 | 2018-03-20 | 21 | 24d | start no earlier than 2018-03-19 |
| 31 |  | Recherche d'un client | 3d | 2018-03-22 | 2018-03-26 | 21 | 20d | start no earlier than 2018-03-22 |
| 32 |  | Recherche d'un bien | 3d | 2018-03-22 | 2018-03-26 | 21 | 20d | start no earlier than 2018-03-22 |
| 33 |  | Tests et corrections éventuelles | 4d | 2018-03-27 | 2018-03-30 | 23, 24, 25, 26, 27, 28, 29, 30, 31, 32 | 20d |  |
| 34 | 3.12 | **Pilotage et démo** | 4d | 2018-03-15 | 2018-03-20 |  | 29d |  |
| 35 |  | Préparation point d'avancement | 4d | 2018-03-15 | 2018-03-20 |  | 29d |  |
| 36 |  | Conception du scénario de la démo | 5d | 2018-03-26 | 2018-03-30 | 1, 16 | 20d | start no earlier than 2018-03-26 |
| 37 |  | Entrainement démo | 1d | 2018-04-02 | 2018-04-02 | 36, 33 | 20d |  |

## Version 2 (saved 2018-03-07)

Note of the change: gantt à jour

Last finish stays 2018-04-30.

Changed:

| ID | Task | Other |
| --- | --- | --- |
| 3 | Ajout d'un bien | resources Léa Ries → Kevin Hadjari |
| 4 | Ajout d'un commercial | resources Kevin Hadjari → Léa Ries |
| 10 | Liste des commerciaux | resources Kevin Hadjari → Léa Ries |

## Version 3 (data date 2018-03-07, saved 2018-03-07)

Note of the change: maj

Last finish stays 2018-04-30. Complete tasks 0 → 11.

Changed:

| ID | Task | Start | Finish | Complete | Total float |
| --- | --- | --- | --- | --- | --- |
| 1 | **Partie graphique** | 2018-02-28 A |  | 0% → 58% |  |
| 2 | Fenêtre d'accueil | 2018-02-28 A | 2018-02-28 A | 0% → 100% | 37d → none |
| 3 | Ajout d'un bien | 2018-02-28 A | 2018-02-28 A | 0% → 100% | 37d → none |
| 4 | Ajout d'un commercial | 2018-02-28 A | 2018-02-28 A | 0% → 100% | 37d → none |
| 9 | Liste des visites | 2018-03-02 A | 2018-03-05 A | 0% → 100% | 34d → none |
| 10 | Liste des commerciaux | 2018-03-01 A | 2018-03-01 A | 0% → 100% | 36d → none |
| 11 | Fiche de souhait | 2018-03-07 A | 2018-03-08 A | 0% → 100% | 31d → none |
| 12 | Catalogue des biens | 2018-03-06 A |  | 0% → 50% |  |
| 13 | Ajouter un client | 2018-03-02 A | 2018-03-05 A | 0% → 100% | 34d → none |
| 14 | Recherche d'un client | 2018-03-06 A | 2018-03-08 A | 0% → 100% | 31d → none |
| 16 | **Création de la base de données** | 2018-02-28 A |  | 0% → 44% |  |
| 17 | Créer la base | 2018-02-28 A | 2018-02-28 A | 0% → 100% | 25d → none |
| 18 | Tester import sous C# | 2018-03-01 A | 2018-03-01 A | 0% → 100% | 25d → none |
| 19 | Créer le jeu de données | 2018-03-02 A | 2018-03-08 A | 0% → 100% | 25d → none |

## Version 4 (saved 2018-03-08)

Note of the change: catalogue bien

Last finish stays 2018-04-30. Complete tasks 11 → 0.

Changed:

| ID | Task | Start | Finish | Complete | Total float |
| --- | --- | --- | --- | --- | --- |
| 1 | **Partie graphique** | 2018-02-28 A → 2018-02-28 |  | 58% → 0% |  |
| 2 | Fenêtre d'accueil | 2018-02-28 A → 2018-02-28 | 2018-02-28 A → 2018-02-28 | 100% → 0% | none → 37d |
| 3 | Ajout d'un bien | 2018-02-28 A → 2018-02-28 | 2018-02-28 A → 2018-02-28 | 100% → 0% | none → 37d |
| 4 | Ajout d'un commercial | 2018-02-28 A → 2018-02-28 | 2018-02-28 A → 2018-02-28 | 100% → 0% | none → 37d |
| 9 | Liste des visites | 2018-03-02 A → 2018-03-02 | 2018-03-05 A → 2018-03-05 | 100% → 0% | none → 34d |
| 10 | Liste des commerciaux | 2018-03-01 A → 2018-03-01 | 2018-03-01 A → 2018-03-01 | 100% → 0% | none → 36d |
| 11 | Fiche de souhait | 2018-03-07 A → 2018-03-07 | 2018-03-08 A → 2018-03-08 | 100% → 0% | none → 31d |
| 12 | Catalogue des biens | 2018-03-06 A → 2018-03-06 |  | 50% → 0% |  |
| 13 | Ajouter un client | 2018-03-02 A → 2018-03-02 | 2018-03-05 A → 2018-03-05 | 100% → 0% | none → 34d |
| 14 | Recherche d'un client | 2018-03-06 A → 2018-03-06 | 2018-03-08 A → 2018-03-08 | 100% → 0% | none → 31d |
| 16 | **Création de la base de données** | 2018-02-28 A → 2018-02-28 |  | 44% → 0% |  |
| 17 | Créer la base | 2018-02-28 A → 2018-02-28 | 2018-02-28 A → 2018-02-28 | 100% → 0% | none → 25d |
| 18 | Tester import sous C# | 2018-03-01 A → 2018-03-01 | 2018-03-01 A → 2018-03-01 | 100% → 0% | none → 25d |
| 19 | Créer le jeu de données | 2018-03-02 A → 2018-03-02 | 2018-03-08 A → 2018-03-08 | 100% → 0% | none → 25d |

## Version 5 (data date 2018-03-07, saved 2018-03-09)

Note of the change: Merge branch 'master' of https://github.com/kevineaa/projetImmo

Last finish stays 2018-04-30. Complete tasks 0 → 12.

Changed:

| ID | Task | Start | Finish | Complete | Total float |
| --- | --- | --- | --- | --- | --- |
| 1 | **Partie graphique** | 2018-02-28 A |  | 0% → 64% |  |
| 2 | Fenêtre d'accueil | 2018-02-28 A | 2018-02-28 A | 0% → 100% | 37d → none |
| 3 | Ajout d'un bien | 2018-02-28 A | 2018-02-28 A | 0% → 100% | 37d → none |
| 4 | Ajout d'un commercial | 2018-02-28 A | 2018-02-28 A | 0% → 100% | 37d → none |
| 9 | Liste des visites | 2018-03-02 A | 2018-03-05 A | 0% → 100% | 34d → none |
| 10 | Liste des commerciaux | 2018-03-01 A | 2018-03-01 A | 0% → 100% | 36d → none |
| 11 | Fiche de souhait | 2018-03-07 A | 2018-03-08 A | 0% → 100% | 31d → none |
| 12 | Catalogue des biens | 2018-03-06 A | 2018-03-08 A | 0% → 100% | 31d → none |
| 13 | Ajouter un client | 2018-03-02 A | 2018-03-05 A | 0% → 100% | 34d → none |
| 14 | Recherche d'un client | 2018-03-06 A | 2018-03-08 A | 0% → 100% | 31d → none |
| 16 | **Création de la base de données** | 2018-02-28 A |  | 0% → 44% |  |
| 17 | Créer la base | 2018-02-28 A | 2018-02-28 A | 0% → 100% | 25d → none |
| 18 | Tester import sous C# | 2018-03-01 A | 2018-03-01 A | 0% → 100% | 25d → none |
| 19 | Créer le jeu de données | 2018-03-02 A | 2018-03-08 A | 0% → 100% | 25d → none |
